# Master Project Schedule

Schedule from MS Project, 1999-12-06 to 2000-04-10, costs in $.
Microsoft China Enterprise Services

## Calendars

- Standard: Mon-Fri 08:00-12:00, 13:00-17:00; Sat-Sun off.

## Resources

| Resource | Group | Rate |
| --- | --- | --- |
| Program Management | Team | 200 |
| Product Management | Team | 200 |
| Test | Team | 200 |
| Logistics | Team | 200 |
| User Ed |  | 200 |
| Development | Team | 200 |
| Support |  |  |
| Customer |  |  |
| UI development |  |  |
| DB development |  |  |

## Schedule

| ID | WBS | Task | Type | Duration | Start | Finish | Predecessors | Baseline start | Baseline finish | Baseline duration | Total slack | Free slack | Resources | Work | Cost | Baseline cost |
| --- | --- | --- | --- | --- | --- | --- | --- | --- | --- | --- | --- | --- | --- | --- | --- | --- |
| 1 | 1 | **项目名称** |  | 91d? | 1999-12-06 | 2000-04-10 |  | 1999-12-06 | 2000-04-10 | 91d? | 0d |  |  | 2360h | 468,800 | 468,800 |
| 2 | 1.1 | **项目启动** |  | 1d? | 1999-12-06 | 1999-12-06 |  | 1999-12-06 | 1999-12-06 | 1d? | 90d |  |  |  |  |  |
| 3 | 1.1.1 | 组建项目组 |  | 1d? | 1999-12-06 | 1999-12-06 |  | 1999-12-06 | 1999-12-06 | 1d? | 90d |  |  |  |  |  |
| 4 | 1.1.2 | 定义项目组角色 |  | 1d? | 1999-12-06 | 1999-12-06 |  | 1999-12-06 | 1999-12-06 | 1d? | 90d |  |  |  |  |  |
| 5 | 1.1.3 | 确定所需技能 |  | 1d? | 1999-12-06 | 1999-12-06 |  | 1999-12-06 | 1999-12-06 | 1d? | 90d |  |  |  |  |  |
| 6 | 1.1.4 | 确定所需资源 |  | 1d? | 1999-12-06 | 1999-12-06 |  | 1999-12-06 | 1999-12-06 | 1d? | 90d |  |  |  |  |  |
| 7 | 1.1.5 | 分配资源 |  | 1d? | 1999-12-06 | 1999-12-06 |  | 1999-12-06 | 1999-12-06 | 1d? | 90d |  |  |  |  |  |
| 8 | 1.1.6 | 项目组建立完成 |  | 1d? | 1999-12-06 | 1999-12-06 |  | 1999-12-06 | 1999-12-06 | 1d? | 90d |  |  |  |  |  |
| 9 | 1.2 | **目标范围** |  | 12d | 1999-12-06 | 1999-12-21 |  | 1999-12-06 | 1999-12-21 | 12d | 0d |  |  | 248h | 49,600 | 49,600 |
| 10 | 1.2.1 | **对外进度** |  | 2d | 1999-12-17 | 1999-12-21 |  | 1999-12-17 | 1999-12-21 | 2d | 0d |  |  |  |  |  |
| 11 | 1.2.1.1 | 目标范围文档审核 | milestone | 0d | 1999-12-17 | 1999-12-17 | 42 | 1999-12-17 | 1999-12-17 | 0d | 0d |  | Program Management; Product Management; Development; Test; Logistics; User Ed; Customer |  |  |  |
| 12 | 1.2.1.2 | 目标范围认可 | milestone | 0d | 1999-12-21 | 1999-12-21 | 44 | 1999-12-21 | 1999-12-21 | 0d | 0d |  | Program Management; Product Management; Development; Test; Logistics; User Ed; Customer |  |  |  |
| 13 | 1.2.2 | **对内进度** |  | 5d | 1999-12-09 | 1999-12-16 |  | 1999-12-09 | 1999-12-16 | 5d | 0d |  |  |  |  |  |
| 14 | 1.2.2.1 | 目标范围文档 | milestone | 0d | 1999-12-09 | 1999-12-09 | 22, 25 | 1999-12-09 | 1999-12-09 | 0d | 0d |  | Product Management |  |  |  |
| 15 | 1.2.2.2 | 项目组核心成员组成 | milestone | 0d | 1999-12-10 | 1999-12-10 | 26, 14 | 1999-12-10 | 1999-12-10 | 0d | 0d |  | Program Management |  |  |  |
| 16 | 1.2.2.3 | 风险评估文档 | milestone | 0d | 1999-12-16 | 1999-12-16 | 15, 41 | 1999-12-16 | 1999-12-16 | 0d | 0d |  | Program Management; Product Management; Development; Test; Logistics; User Ed |  |  |  |
| 17 | 1.2.3 | **工作** |  | 11d | 1999-12-06 | 1999-12-20 |  | 1999-12-06 | 1999-12-20 | 11d | 0d |  |  | 248h | 49,600 | 49,600 |
| 18 | 1.2.3.1 | **产品管理** |  | 4d | 1999-12-06 | 1999-12-09 |  | 1999-12-06 | 1999-12-09 | 4d | 0d |  |  | 32h | 6,400 | 6,400 |
| 19 | 1.2.3.1.1 | 问题陈述 |  | 1d | 1999-12-06 | 1999-12-06 |  | 1999-12-06 | 1999-12-06 | 1d | 0d |  | Product Management | 8h | 1,600 | 1,600 |
| 20 | 1.2.3.1.2 | 目标范围陈述 |  | 1d | 1999-12-07 | 1999-12-07 | 19 | 1999-12-07 | 1999-12-07 | 1d | 0d |  | Product Management | 8h | 1,600 | 1,600 |
| 21 | 1.2.3.1.3 | 用户描述 |  | 1d | 1999-12-08 | 1999-12-08 | 20 | 1999-12-08 | 1999-12-08 | 1d | 0d |  | Product Management | 8h | 1,600 | 1,600 |
| 22 | 1.2.3.1.4 | 业务目标 |  | 1d | 1999-12-09 | 1999-12-09 | 21 | 1999-12-09 | 1999-12-09 | 1d | 0d |  | Product Management | 8h | 1,600 | 1,600 |
| 23 | 1.2.3.2 | **项目管理** |  | 5d | 1999-12-06 | 1999-12-10 |  | 1999-12-06 | 1999-12-10 | 5d | 0d |  |  | 24h | 4,800 | 4,800 |
| 24 | 1.2.3.2.1 | 解决方案概要 |  | 1d | 1999-12-06 | 1999-12-06 |  | 1999-12-06 | 1999-12-06 | 1d | 2d | 0d | Program Management | 8h | 1,600 | 1,600 |
| 25 | 1.2.3.2.2 | 设计目标 |  | 1d | 1999-12-07 | 1999-12-07 | 24 | 1999-12-07 | 1999-12-07 | 1d | 2d |  | Program Management | 8h | 1,600 | 1,600 |
| 26 | 1.2.3.2.3 | 项目结构 |  | 1d | 1999-12-10 | 1999-12-10 | 25, 14 | 1999-12-10 | 1999-12-10 | 1d | 0d |  | Program Management | 8h | 1,600 | 1,600 |

| ID | WBS | Task | Type | Duration | Start | Finish | Predecessors | Baseline start | Baseline finish | Baseline duration | Total slack | Free slack | Resources | Work | Cost | Baseline cost |
| --- | --- | --- | --- | --- | --- | --- | --- | --- | --- | --- | --- | --- | --- | --- | --- | --- |
| 27 | 1.2.3.3 | **开发** |  | 3d | 1999-12-13 | 1999-12-15 |  | 1999-12-13 | 1999-12-15 | 3d | 0d |  |  | 24h | 4,800 | 4,800 |
| 28 | 1.2.3.3.1 | 程序原型 |  | 1d | 1999-12-13 | 1999-12-13 | 15 | 1999-12-13 | 1999-12-13 | 1d | 0d |  | Development | 8h | 1,600 | 1,600 |
| 29 | 1.2.3.3.2 | 候选开发方案 |  | 1d | 1999-12-14 | 1999-12-14 | 28 | 1999-12-14 | 1999-12-14 | 1d | 0d |  | Development | 8h | 1,600 | 1,600 |
| 30 | 1.2.3.3.3 | 对可能存在的问题进行评估 |  | 1d | 1999-12-15 | 1999-12-15 | 29 | 1999-12-15 | 1999-12-15 | 1d | 0d |  | Development | 8h | 1,600 | 1,600 |
| 31 | 1.2.3.4 | **用户教育** |  | 2d | 1999-12-13 | 1999-12-14 |  | 1999-12-13 | 1999-12-14 | 2d | 1d |  |  | 16h | 3,200 | 3,200 |
| 32 | 1.2.3.4.1 | 对用户的要求 |  | 1d | 1999-12-13 | 1999-12-13 | 15 | 1999-12-13 | 1999-12-13 | 1d | 1d | 0d | User Ed | 8h | 1,600 | 1,600 |
| 33 | 1.2.3.4.2 | 对可能存在的问题进行评估 |  | 1d | 1999-12-14 | 1999-12-14 | 32 | 1999-12-14 | 1999-12-14 | 1d | 1d |  | User Ed | 8h | 1,600 | 1,600 |
| 34 | 1.2.3.5 | **测试** |  | 3d | 1999-12-13 | 1999-12-15 |  | 1999-12-13 | 1999-12-15 | 3d | 0d |  |  | 24h | 4,800 | 4,800 |
| 35 | 1.2.3.5.1 | 测试策略 |  | 1d | 1999-12-13 | 1999-12-13 | 15 | 1999-12-13 | 1999-12-13 | 1d | 0d |  | Test | 8h | 1,600 | 1,600 |
| 36 | 1.2.3.5.2 | 测试标准 |  | 1d | 1999-12-14 | 1999-12-14 | 35 | 1999-12-14 | 1999-12-14 | 1d | 0d |  | Test | 8h | 1,600 | 1,600 |
| 37 | 1.2.3.5.3 | 对可能存在的问题进行评估 |  | 1d | 1999-12-15 | 1999-12-15 | 36 | 1999-12-15 | 1999-12-15 | 1d | 0d |  | Test | 8h | 1,600 | 1,600 |
| 38 | 1.2.3.6 | **实施** |  | 2d | 1999-12-13 | 1999-12-14 |  | 1999-12-13 | 1999-12-14 | 2d | 1d |  |  | 16h | 3,200 | 3,200 |
| 39 | 1.2.3.6.1 | 对可能存在的项目实施问题进行评估 |  | 1d | 1999-12-13 | 1999-12-13 | 15 | 1999-12-13 | 1999-12-13 | 1d | 1d | 0d | Logistics | 8h | 1,600 | 1,600 |
| 40 | 1.2.3.6.2 | 对可能存在的项目支持问题进行评估 |  | 1d | 1999-12-14 | 1999-12-14 | 39 | 1999-12-14 | 1999-12-14 | 1d | 1d |  | Logistics | 8h | 1,600 | 1,600 |
| 41 | 1.2.3.7 | 风险评估 |  | 1d | 1999-12-16 | 1999-12-16 | 30, 33, 37, 40 | 1999-12-16 | 1999-12-16 | 1d | 0d |  | Program Management; Product Management; Development; Test; Logistics; User Ed | 48h | 9,600 | 9,600 |
| 42 | 1.2.3.8 | 目标范围文档审核 |  | 1d | 1999-12-17 | 1999-12-17 | 16 | 1999-12-17 | 1999-12-17 | 1d | 0d |  | Program Management; Product Management; Development; Test; Logistics; User Ed | 48h | 9,600 | 9,600 |
| 43 | 1.2.3.9 | 目标范围文档更新 |  | 1d | 1999-12-20 | 1999-12-20 | 11 | 1999-12-20 | 1999-12-20 | 1d | 0d |  | Program Management; Product Management | 16h | 3,200 | 3,200 |
| 44 | 1.2.4 | 可宽限时间 |  | 1d | 1999-12-21 | 1999-12-21 | 43 | 1999-12-21 | 1999-12-21 | 1d | 0d |  |  |  |  |  |
| 45 | 1.3 | **计划** |  | 35d | 1999-12-22 | 2000-02-08 | 9 | 1999-12-22 | 2000-02-08 | 35d | 0d |  |  | 920h | 184,000 | 184,000 |
| 46 | 1.3.1 | **对外进度** |  | 2d | 2000-02-04 | 2000-02-08 |  | 2000-02-04 | 2000-02-08 | 2d | 0d |  |  |  |  |  |
| 47 | 1.3.1.1 | 项目进度文档审核 | milestone | 0d | 2000-02-04 | 2000-02-04 | 139 | 2000-02-04 | 2000-02-04 | 0d | 0d |  | Program Management; Product Management; Development; Test; Logistics; User Ed; Customer |  |  |  |
| 48 | 1.3.1.2 | 项目进度认可 | milestone | 0d | 2000-02-08 | 2000-02-08 | 141 | 2000-02-08 | 2000-02-08 | 0d | 0d |  | Program Management; Product Management; Development; Test; Logistics; User Ed; Customer |  |  |  |
| 49 | 1.3.2 | **内部进度** |  | 23d | 1999-12-31 | 2000-02-02 |  | 1999-12-31 | 2000-02-02 | 23d | 0d |  |  |  |  |  |
| 50 | 1.3.2.1 | 概念设计 | milestone | 0d | 1999-12-31 | 1999-12-31 | 69 | 1999-12-31 | 1999-12-31 | 0d | 0d |  | Product Management |  |  |  |
| 51 | 1.3.2.2 | 逻辑设计 | milestone | 0d | 2000-01-10 | 2000-01-10 | 80, 93, 116, 119 | 2000-01-10 | 2000-01-10 | 0d | 0d |  | Program Management |  |  |  |
| 52 | 1.3.2.3 | 物理设计 | milestone | 0d | 2000-02-01 | 2000-02-01 | 114 | 2000-02-01 | 2000-02-01 | 0d | 0d |  | Development |  |  |  |
| 53 | 1.3.2.4 | 功能定义 | milestone | 0d | 2000-02-02 | 2000-02-02 | 137 | 2000-02-02 | 2000-02-02 | 0d | 4d |  | Program Management |  |  |  |
| 54 | 1.3.2.5 | 主项目计划 | milestone | 0d | 2000-02-02 | 2000-02-02 | 137 | 2000-02-02 | 2000-02-02 | 0d | 4d |  | Program Management |  |  |  |
| 55 | 1.3.2.6 | 主项目进度 | milestone | 0d | 2000-02-02 | 2000-02-02 | 137 | 2000-02-02 | 2000-02-02 | 0d | 4d |  | Program Management |  |  |  |

| ID | WBS | Task | Duration | Start | Finish | Predecessors | Baseline start | Baseline finish | Baseline duration | Total slack | Free slack | Resources | Work | Cost | Baseline cost |
| --- | --- | --- | --- | --- | --- | --- | --- | --- | --- | --- | --- | --- | --- | --- | --- |
| 56 | 1.3.3 | **工作** | 34d | 1999-12-22 | 2000-02-07 |  | 1999-12-22 | 2000-02-07 | 34d | 0d |  |  | 920h | 184,000 | 184,000 |
| 57 | 1.3.3.1 | **产品管理** | 9d | 1999-12-22 | 2000-01-03 |  | 1999-12-22 | 2000-01-03 | 9d | 0d |  |  | 160h | 32,000 | 32,000 |
| 58 | 1.3.3.1.1 | **概念设计** | 8d | 1999-12-22 | 1999-12-31 |  | 1999-12-22 | 1999-12-31 | 8d | 0d |  | Product Management | 144h | 28,800 | 28,800 |
| 59 | 1.3.3.1.1.1 | **调查与研究** | 2d | 1999-12-22 | 1999-12-23 |  | 1999-12-22 | 1999-12-23 | 2d | 0d |  |  | 16h | 3,200 | 3,200 |
| 60 | 1.3.3.1.1.1.1 | 确定主要业务流程 | 1d | 1999-12-22 | 1999-12-22 |  | 1999-12-22 | 1999-12-22 | 1d | 0d |  | Product Management | 8h | 1,600 | 1,600 |
| 61 | 1.3.3.1.1.1.2 | 确定用户特征 | 1d | 1999-12-23 | 1999-12-23 | 60 | 1999-12-23 | 1999-12-23 | 1d | 0d |  | Product Management | 8h | 1,600 | 1,600 |
| 62 | 1.3.3.1.1.2 | **分析** | 2d | 1999-12-24 | 1999-12-27 |  | 1999-12-24 | 1999-12-27 | 2d | 0d |  | Product Management | 32h | 6,400 | 6,400 |
| 63 | 1.3.3.1.1.2.1 | 整理调查研究得到的数据 | 1d | 1999-12-24 | 1999-12-24 | 61 | 1999-12-24 | 1999-12-24 | 1d | 0d |  | Product Management | 8h | 1,600 | 1,600 |
| 64 | 1.3.3.1.1.2.2 | 得出当前用户使用场景 | 1d | 1999-12-27 | 1999-12-27 | 63 | 1999-12-27 | 1999-12-27 | 1d | 0d |  | Product Management | 8h | 1,600 | 1,600 |
| 65 | 1.3.3.1.1.3 | **规划最佳方案** | 4d | 1999-12-28 | 1999-12-31 |  | 1999-12-28 | 1999-12-31 | 4d | 0d |  |  | 32h | 6,400 | 6,400 |
| 66 | 1.3.3.1.1.3.1 | 设计用户未来的使用场景 | 1d | 1999-12-28 | 1999-12-28 | 64 | 1999-12-28 | 1999-12-28 | 1d | 0d |  | Product Management | 8h | 1,600 | 1,600 |
| 67 | 1.3.3.1.1.3.2 | 分析对企业日常运作有重要影响的系统、过程和数据 | 1d | 1999-12-29 | 1999-12-29 | 66 | 1999-12-29 | 1999-12-29 | 1d | 0d |  | Product Management | 8h | 1,600 | 1,600 |
| 68 | 1.3.3.1.1.3.3 | 审核用户当前和未来的使用场景 | 1d | 1999-12-30 | 1999-12-30 | 67 | 1999-12-30 | 1999-12-30 | 1d | 0d |  | Product Management | 8h | 1,600 | 1,600 |
| 69 | 1.3.3.1.1.3.4 | 确认使用场景 | 1d | 1999-12-31 | 1999-12-31 | 68 | 1999-12-31 | 1999-12-31 | 1d | 0d |  | Product Management | 8h | 1,600 | 1,600 |
| 70 | 1.3.3.1.2 | 交流计划 | 1d | 2000-01-03 | 2000-01-03 | 58 | 2000-01-03 | 2000-01-03 | 1d | 25d | 23d | Product Management | 8h | 1,600 | 1,600 |
| 71 | 1.3.3.1.3 | 交流进度安排 | 1d | 1999-12-22 | 1999-12-22 |  | 1999-12-22 | 1999-12-22 | 1d | 33d | 31d | Product Management | 8h | 1,600 | 1,600 |
| 72 | 1.3.3.2 | **项目管理** | 24d | 2000-01-04 | 2000-02-04 |  | 2000-01-04 | 2000-02-04 | 24d | 0d |  |  | 104h | 20,800 | 20,800 |
| 73 | 1.3.3.2.1 | **逻辑设计** | 5d | 2000-01-04 | 2000-01-10 |  | 2000-01-04 | 2000-01-10 | 5d | 0d |  | Program Management | 80h | 16,000 | 16,000 |
| 74 | 1.3.3.2.1.1 | **分析** | 3d | 2000-01-04 | 2000-01-06 |  | 2000-01-04 | 2000-01-06 | 3d | 0d |  |  | 24h | 4,800 | 4,800 |
| 75 | 1.3.3.2.1.1.1 | 从使用场景确定使用者、对象、服务和属性 | 1d | 2000-01-04 | 2000-01-04 | 135 | 2000-01-04 | 2000-01-04 | 1d | 0d |  | Program Management | 8h | 1,600 | 1,600 |
| 76 | 1.3.3.2.1.1.2 | 确定业务规则 | 1d | 2000-01-05 | 2000-01-05 | 75 | 2000-01-05 | 2000-01-05 | 1d | 0d |  | Program Management | 8h | 1,600 | 1,600 |
| 77 | 1.3.3.2.1.1.3 | 确定系统构成和相互关系 | 1d | 2000-01-06 | 2000-01-06 | 76 | 2000-01-06 | 2000-01-06 | 1d | 0d |  | Program Management | 8h | 1,600 | 1,600 |
| 78 | 1.3.3.2.1.2 | **优化** | 2d | 2000-01-07 | 2000-01-10 |  | 2000-01-07 | 2000-01-10 | 2d | 0d |  |  | 16h | 3,200 | 3,200 |
| 79 | 1.3.3.2.1.2.1 | 优化对象模型 | 1d | 2000-01-07 | 2000-01-07 | 77 | 2000-01-07 | 2000-01-07 | 1d | 0d |  | Program Management | 8h | 1,600 | 1,600 |
| 80 | 1.3.3.2.1.2.2 | 根据使用场景验证对象模型 | 1d | 2000-01-10 | 2000-01-10 | 79 | 2000-01-10 | 2000-01-10 | 1d | 0d |  | Program Management | 8h | 1,600 | 1,600 |
| 81 | 1.3.3.2.2 | 功能定义说明书 | 1d | 2000-02-03 | 2000-02-03 | 137 | 2000-02-03 | 2000-02-03 | 1d | 3d |  | Program Management | 8h | 1,600 | 1,600 |
| 82 | 1.3.3.2.3 | 主项目计划 | 1d | 2000-02-04 | 2000-02-04 | 121, 126, 129, 133, 70 | 2000-02-04 | 2000-02-04 | 1d | 2d |  | Program Management | 8h | 1,600 | 1,600 |
| 83 | 1.3.3.2.4 | 主项目进度 | 1d | 2000-02-04 | 2000-02-04 | 121, 127, 130, 134, 71 | 2000-02-04 | 2000-02-04 | 1d | 2d |  | Program Management | 8h | 1,600 | 1,600 |

| ID | WBS | Task | Duration | Start | Finish | Predecessors | Baseline start | Baseline finish | Baseline duration | Total slack | Resources | Work | Cost | Baseline cost |
| --- | --- | --- | --- | --- | --- | --- | --- | --- | --- | --- | --- | --- | --- | --- |
| 84 | 1.3.3.3 | **开发** | 23d | 2000-01-04 | 2000-02-03 |  | 2000-01-04 | 2000-02-03 | 23d | 0d |  | 376h | 75,200 | 75,200 |
| 85 | 1.3.3.3.1 | **业务流程开发** | 21d | 2000-01-04 | 2000-02-01 |  | 2000-01-04 | 2000-02-01 | 21d | 0d |  | 320h | 64,000 | 64,000 |
| 86 | 1.3.3.3.1.1 | **逻辑设计** | 5d | 2000-01-04 | 2000-01-10 |  | 2000-01-04 | 2000-01-10 | 5d | 0d | Program Management | 80h | 16,000 | 16,000 |
| 87 | 1.3.3.3.1.1.1 | **分析** | 3d | 2000-01-04 | 2000-01-06 |  | 2000-01-04 | 2000-01-06 | 3d | 0d |  | 24h | 4,800 | 4,800 |
| 88 | 1.3.3.3.1.1.1.1 | 从使用场景确定使用者、对象、服务和属性 | 1d | 2000-01-04 | 2000-01-04 | 135 | 2000-01-04 | 2000-01-04 | 1d | 0d | Development | 8h | 1,600 | 1,600 |
| 89 | 1.3.3.3.1.1.1.2 | 确定业务规则 | 1d | 2000-01-05 | 2000-01-05 | 88 | 2000-01-05 | 2000-01-05 | 1d | 0d | Development | 8h | 1,600 | 1,600 |
| 90 | 1.3.3.3.1.1.1.3 | 确定系统构成和相互关系 | 1d | 2000-01-06 | 2000-01-06 | 89 | 2000-01-06 | 2000-01-06 | 1d | 0d | Development | 8h | 1,600 | 1,600 |
| 91 | 1.3.3.3.1.1.2 | **优化** | 2d | 2000-01-07 | 2000-01-10 |  | 2000-01-07 | 2000-01-10 | 2d | 0d |  | 16h | 3,200 | 3,200 |
| 92 | 1.3.3.3.1.1.2.1 | 优化对象模型 | 1d | 2000-01-07 | 2000-01-07 | 90 | 2000-01-07 | 2000-01-07 | 1d | 0d | Development | 8h | 1,600 | 1,600 |
| 93 | 1.3.3.3.1.1.2.2 | 根据使用场景验证对象模型 | 1d | 2000-01-10 | 2000-01-10 | 92 | 2000-01-10 | 2000-01-10 | 1d | 0d | Development | 8h | 1,600 | 1,600 |
| 94 | 1.3.3.3.1.2 | **物理设计** | 15d | 2000-01-12 | 2000-02-01 |  | 2000-01-12 | 2000-02-01 | 15d | 0d | Development | 240h | 48,000 | 48,000 |
| 95 | 1.3.3.3.1.2.1 | **研究** | 3d | 2000-01-12 | 2000-01-14 |  | 2000-01-12 | 2000-01-14 | 3d | 0d |  | 24h | 4,800 | 4,800 |
| 96 | 1.3.3.3.1.2.1.1 | 当前网络、数据和组件的拓扑结构 | 1d | 2000-01-12 | 2000-01-12 | 136 | 2000-01-12 | 2000-01-12 | 1d | 0d | Development | 8h | 1,600 | 1,600 |
| 97 | 1.3.3.3.1.2.1.2 | 应用程序对软硬件环境的需求和限制 | 1d | 2000-01-13 | 2000-01-13 | 96 | 2000-01-13 | 2000-01-13 | 1d | 0d | Development | 8h | 1,600 | 1,600 |
| 98 | 1.3.3.3.1.2.1.3 | 基础结构的需求和限制 | 1d | 2000-01-14 | 2000-01-14 | 97 | 2000-01-14 | 2000-01-14 | 1d | 0d | Development | 8h | 1,600 | 1,600 |
| 99 | 1.3.3.3.1.2.2 | **分析** | 2d | 2000-01-17 | 2000-01-18 |  | 2000-01-17 | 2000-01-18 | 2d | 0d |  | 16h | 3,200 | 3,200 |
| 100 | 1.3.3.3.1.2.2.1 | 提交网络、数据和组件的拓扑结构 | 1d | 2000-01-17 | 2000-01-17 | 98 | 2000-01-17 | 2000-01-17 | 1d | 0d | Development | 8h | 1,600 | 1,600 |
| 101 | 1.3.3.3.1.2.2.2 | 候选技术方案的选择 | 1d | 2000-01-18 | 2000-01-18 | 100 | 2000-01-18 | 2000-01-18 | 1d | 0d | Development | 8h | 1,600 | 1,600 |
| 102 | 1.3.3.3.1.2.3 | **优化** | 7d | 2000-01-19 | 2000-01-27 |  | 2000-01-19 | 2000-01-27 | 7d | 0d |  | 56h | 11,200 | 11,200 |
| 103 | 1.3.3.3.1.2.3.1 | 将对象转换为基于服务的组件 | 1d | 2000-01-19 | 2000-01-19 | 101 | 2000-01-19 | 2000-01-19 | 1d | 0d | Development | 8h | 1,600 | 1,600 |
| 104 | 1.3.3.3.1.2.3.2 | **软件发布方式的优化** | 6d | 2000-01-20 | 2000-01-27 |  | 2000-01-20 | 2000-01-27 | 6d | 0d |  | 48h | 9,600 | 9,600 |
| 105 | 1.3.3.3.1.2.3.2.1 | 初始软件发布方式 | 1d | 2000-01-20 | 2000-01-20 | 103 | 2000-01-20 | 2000-01-20 | 1d | 0d | Development | 8h | 1,600 | 1,600 |
| 106 | 1.3.3.3.1.2.3.2.2 | 认证 | 1d | 2000-01-21 | 2000-01-21 | 105 | 2000-01-21 | 2000-01-21 | 1d | 0d | Development | 8h | 1,600 | 1,600 |
| 107 | 1.3.3.3.1.2.3.2.3 | 优化的软件发布方式 | 1d | 2000-01-24 | 2000-01-24 | 106 | 2000-01-24 | 2000-01-24 | 1d | 0d | Development | 8h | 1,600 | 1,600 |
| 108 | 1.3.3.3.1.2.3.2.4 | 认证 | 1d | 2000-01-25 | 2000-01-25 | 107 | 2000-01-25 | 2000-01-25 | 1d | 0d | Development | 8h | 1,600 | 1,600 |
| 109 | 1.3.3.3.1.2.3.2.5 | 最终的软件发布方式 | 1d | 2000-01-26 | 2000-01-26 | 108 | 2000-01-26 | 2000-01-26 | 1d | 0d | Development | 8h | 1,600 | 1,600 |
| 110 | 1.3.3.3.1.2.3.2.6 | 认证 | 1d | 2000-01-27 | 2000-01-27 | 109 | 2000-01-27 | 2000-01-27 | 1d | 0d | Development | 8h | 1,600 | 1,600 |

| ID | WBS | Task | Duration | Start | Finish | Predecessors | Baseline start | Baseline finish | Baseline duration | Total slack | Free slack | Resources | Work | Cost | Baseline cost |
| --- | --- | --- | --- | --- | --- | --- | --- | --- | --- | --- | --- | --- | --- | --- | --- |
| 111 | 1.3.3.3.1.2.4 | **规范** | 3d | 2000-01-28 | 2000-02-01 |  | 2000-01-28 | 2000-02-01 | 3d | 0d |  |  | 24h | 4,800 | 4,800 |
| 112 | 1.3.3.3.1.2.4.1 | 技术结构和程序开发方式 | 1d | 2000-01-28 | 2000-01-28 | 110 | 2000-01-28 | 2000-01-28 | 1d | 0d |  | Development | 8h | 1,600 | 1,600 |
| 113 | 1.3.3.3.1.2.4.2 | 定义组件的接口 | 1d | 2000-01-31 | 2000-01-31 | 112 | 2000-01-31 | 2000-01-31 | 1d | 0d |  | Development | 8h | 1,600 | 1,600 |
| 114 | 1.3.3.3.1.2.4.3 | 定义组件内部结构 | 1d | 2000-02-01 | 2000-02-01 | 113 | 2000-02-01 | 2000-02-01 | 1d | 0d |  | Development | 8h | 1,600 | 1,600 |
| 115 | 1.3.3.3.2 | **用户界面开发** | 7d | 2000-01-04 | 2000-01-12 |  | 2000-01-04 | 2000-01-12 | 7d | 4d |  |  | 16h | 3,200 | 3,200 |
| 116 | 1.3.3.3.2.1 | 用户界面逻辑设计 | 1d | 2000-01-04 | 2000-01-04 | 135 | 2000-01-04 | 2000-01-04 | 1d | 4d |  | Development | 8h | 1,600 | 1,600 |
| 117 | 1.3.3.3.2.2 | 用户界面物理设计 | 1d | 2000-01-12 | 2000-01-12 | 116, 136 | 2000-01-12 | 2000-01-12 | 1d | 19d |  | Development | 8h | 1,600 | 1,600 |
| 118 | 1.3.3.3.3 | **数据库开发** | 7d | 2000-01-04 | 2000-01-12 |  | 2000-01-04 | 2000-01-12 | 7d | 4d |  |  | 16h | 3,200 | 3,200 |
| 119 | 1.3.3.3.3.1 | 数据库逻辑设计 | 1d | 2000-01-04 | 2000-01-04 | 135 | 2000-01-04 | 2000-01-04 | 1d | 4d |  | Development | 8h | 1,600 | 1,600 |
| 120 | 1.3.3.3.3.2 | 数据库物理设计 | 1d | 2000-01-12 | 2000-01-12 | 119, 136 | 2000-01-12 | 2000-01-12 | 1d | 19d |  | Development | 8h | 1,600 | 1,600 |
| 121 | 1.3.3.3.4 | 开发计划 | 1d | 2000-02-03 | 2000-02-03 | 137 | 2000-02-03 | 2000-02-03 | 1d | 2d | 0d | Development | 8h | 1,600 | 1,600 |
| 122 | 1.3.3.3.5 | 开发进度 | 1d | 2000-02-03 | 2000-02-03 | 137 | 2000-02-03 | 2000-02-03 | 1d | 3d |  | Development | 8h | 1,600 | 1,600 |
| 123 | 1.3.3.3.6 | 方案的证实 | 1d | 2000-02-03 | 2000-02-03 | 137 | 2000-02-03 | 2000-02-03 | 1d | 3d |  | Development | 8h | 1,600 | 1,600 |
| 124 | 1.3.3.4 | **用户教育** | 17d | 2000-01-12 | 2000-02-03 |  | 2000-01-12 | 2000-02-03 | 17d | 3d |  |  | 24h | 4,800 | 4,800 |
| 125 | 1.3.3.4.1 | 设计用户支持方案 | 1d | 2000-01-12 | 2000-01-12 | 136 | 2000-01-12 | 2000-01-12 | 1d | 19d |  | User Ed | 8h | 1,600 | 1,600 |
| 126 | 1.3.3.4.2 | 用户教育计划 | 1d | 2000-02-03 | 2000-02-03 | 137 | 2000-02-03 | 2000-02-03 | 1d | 2d | 0d | User Ed | 8h | 1,600 | 1,600 |
| 127 | 1.3.3.4.3 | 用户教育进度 | 1d | 2000-02-03 | 2000-02-03 | 137 | 2000-02-03 | 2000-02-03 | 1d | 2d | 0d | User Ed | 8h | 1,600 | 1,600 |
| 128 | 1.3.3.5 | **测试** | 1d | 2000-02-03 | 2000-02-03 |  | 2000-02-03 | 2000-02-03 | 1d | 2d |  |  | 16h | 3,200 | 3,200 |
| 129 | 1.3.3.5.1 | 测试计划 | 1d | 2000-02-03 | 2000-02-03 | 137 | 2000-02-03 | 2000-02-03 | 1d | 2d | 0d | Test | 8h | 1,600 | 1,600 |
| 130 | 1.3.3.5.2 | 测试进度 | 1d | 2000-02-03 | 2000-02-03 | 137 | 2000-02-03 | 2000-02-03 | 1d | 2d | 0d | Test | 8h | 1,600 | 1,600 |
| 131 | 1.3.3.6 | **实施管理** | 32d | 1999-12-22 | 2000-02-03 |  | 1999-12-22 | 2000-02-03 | 32d | 3d |  |  | 24h | 4,800 | 4,800 |
| 132 | 1.3.3.6.1 | 设计评估 | 1d | 1999-12-22 | 1999-12-22 |  | 1999-12-22 | 1999-12-22 | 1d | 34d |  | Logistics | 8h | 1,600 | 1,600 |
| 133 | 1.3.3.6.2 | 实施与发布计划 | 1d | 2000-02-03 | 2000-02-03 | 137 | 2000-02-03 | 2000-02-03 | 1d | 2d | 0d | Logistics | 8h | 1,600 | 1,600 |
| 134 | 1.3.3.6.3 | 实施与发布进度 | 1d | 2000-02-03 | 2000-02-03 | 137 | 2000-02-03 | 2000-02-03 | 1d | 2d | 0d | Logistics | 8h | 1,600 | 1,600 |
| 135 | 1.3.3.7 | 概念设计审核 | 1d | 2000-01-03 | 2000-01-03 | 50 | 2000-01-03 | 2000-01-03 | 1d | 0d |  | Program Management; Product Management | 16h | 3,200 | 3,200 |
| 136 | 1.3.3.8 | 逻辑设计审核 | 1d | 2000-01-11 | 2000-01-11 | 51 | 2000-01-11 | 2000-01-11 | 1d | 0d |  | Program Management; Development; Test; User Ed; Logistics; Product Management | 48h | 9,600 | 9,600 |
| 137 | 1.3.3.9 | 物理设计审核 | 1d | 2000-02-02 | 2000-02-02 | 52 | 2000-02-02 | 2000-02-02 | 1d | 0d |  | Program Management; Development; Test; Logistics | 32h | 6,400 | 6,400 |
| 138 | 1.3.3.10 | 风险评估 | 1d | 2000-02-03 | 2000-02-03 | 137 | 2000-02-03 | 2000-02-03 | 1d | 0d |  | Program Management; Product Management; Development; Test; Logistics; User Ed | 48h | 9,600 | 9,600 |
| 139 | 1.3.3.11 | 计划文档审核 | 1d | 2000-02-04 | 2000-02-04 | 138 | 2000-02-04 | 2000-02-04 | 1d | 0d |  | Program Management; Product Management; Development; Test; Logistics; User Ed | 48h | 9,600 | 9,600 |
| 140 | 1.3.3.12 | 计划文档更新 | 1d | 2000-02-07 | 2000-02-07 | 47 | 2000-02-07 | 2000-02-07 | 1d | 0d |  | Program Management; Product Management; Development | 24h | 4,800 | 4,800 |
| 141 | 1.3.4 | 可宽限时间 | 1d | 2000-02-08 | 2000-02-08 | 140 | 2000-02-08 | 2000-02-08 | 1d | 0d |  |  |  |  |  |

| ID | WBS | Task | Type | Duration | Start | Finish | Predecessors | Baseline start | Baseline finish | Baseline duration | Total slack | Free slack | Resources | Work | Cost | Baseline cost |
| --- | --- | --- | --- | --- | --- | --- | --- | --- | --- | --- | --- | --- | --- | --- | --- | --- |
| 142 | 1.4 | **开发** |  | 14d | 2000-02-09 | 2000-02-28 | 45 | 2000-02-09 | 2000-02-28 | 14d | 0d |  |  | 720h | 144,000 | 144,000 |
| 143 | 1.4.1 | **对外进度** |  | 2d | 2000-02-24 | 2000-02-28 |  | 2000-02-24 | 2000-02-28 | 2d | 0d |  |  |  |  |  |
| 144 | 1.4.1.1 | 开发成果审核 | milestone | 0d | 2000-02-24 | 2000-02-24 | 243 | 2000-02-24 | 2000-02-24 | 0d | 0d |  | Program Management; Product Management; Development; Test; Logistics; User Ed; Customer; Support |  |  |  |
| 145 | 1.4.1.2 | 需求和项目范围确认完成 | milestone | 0d | 2000-02-28 | 2000-02-28 | 245 | 2000-02-28 | 2000-02-28 | 0d | 0d |  | Program Management; Product Management; Development; Test; Logistics; User Ed; Support; Customer |  |  |  |
| 146 | 1.4.2 | **内部进度** |  | 0d | 2000-02-17 | 2000-02-17 |  | 2000-02-17 | 2000-02-17 | 0d | 0d |  |  |  |  |  |
| 147 | 1.4.2.1 | 内部发布1 | milestone | 0d | 2000-02-17 | 2000-02-17 | 188, 187 | 2000-02-17 | 2000-02-17 | 0d | 4d | 0d | Development; User Ed |  |  |  |
| 148 | 1.4.2.2 | 内部发布2 | milestone | 0d | 2000-02-17 | 2000-02-17 | 190, 187, 188, 189 | 2000-02-17 | 2000-02-17 | 0d | 4d | 0d | Development; User Ed |  |  |  |
| 149 | 1.4.2.3 | 内部发布3 | milestone | 0d | 2000-02-17 | 2000-02-17 | 192, 187, 188, 189, 190, 191 | 2000-02-17 | 2000-02-17 | 0d | 0d |  | Development; User Ed |  |  |  |
| 150 | 1.4.3 | **工作** |  | 13d | 2000-02-09 | 2000-02-25 |  | 2000-02-09 | 2000-02-25 | 13d | 0d |  |  | 720h | 144,000 | 144,000 |
| 151 | 1.4.3.1 | **产品管理** |  | 1d | 2000-02-09 | 2000-02-09 |  | 2000-02-09 | 2000-02-09 | 1d | 13d |  |  | 24h | 4,800 | 4,800 |
| 152 | 1.4.3.1.1 | 用户期望管理 |  | 1d | 2000-02-09 | 2000-02-09 |  | 2000-02-09 | 2000-02-09 | 1d | 13d |  | Product Management | 8h | 1,600 | 1,600 |
| 153 | 1.4.3.1.2 | 执行交流计划 |  | 1d | 2000-02-09 | 2000-02-09 |  | 2000-02-09 | 2000-02-09 | 1d | 13d |  | Product Management | 8h | 1,600 | 1,600 |
| 154 | 1.4.3.1.3 | Beta 测试计划 |  | 1d | 2000-02-09 | 2000-02-09 |  | 2000-02-09 | 2000-02-09 | 1d | 13d |  | Product Management | 8h | 1,600 | 1,600 |
| 155 | 1.4.3.2 | **项目管理** |  | 1d | 2000-02-09 | 2000-02-09 |  | 2000-02-09 | 2000-02-09 | 1d | 13d |  |  | 24h | 4,800 | 4,800 |
| 156 | 1.4.3.2.1 | 项目进度跟踪 |  | 1d | 2000-02-09 | 2000-02-09 |  | 2000-02-09 | 2000-02-09 | 1d | 13d |  | Program Management | 8h | 1,600 | 1,600 |
| 157 | 1.4.3.2.2 | 项目组交流与协调 |  | 1d | 2000-02-09 | 2000-02-09 |  | 2000-02-09 | 2000-02-09 | 1d | 13d |  | Program Management | 8h | 1,600 | 1,600 |
| 158 | 1.4.3.2.3 | Beta 测试计划 |  | 1d | 2000-02-09 | 2000-02-09 |  | 2000-02-09 | 2000-02-09 | 1d | 13d |  | Program Management | 8h | 1,600 | 1,600 |
| 159 | 1.4.3.3 | **开发** |  | 7d | 2000-02-09 | 2000-02-17 |  | 2000-02-09 | 2000-02-17 | 7d | 0d |  |  | 216h | 43,200 | 43,200 |
| 160 | 1.4.3.3.1 | **业务流程开发** |  | 3d | 2000-02-09 | 2000-02-11 |  | 2000-02-09 | 2000-02-11 | 3d | 0d |  |  | 72h | 14,400 | 14,400 |
| 161 | 1.4.3.3.1.1 | **组件 1** |  | 1d | 2000-02-09 | 2000-02-09 |  | 2000-02-09 | 2000-02-09 | 1d | 0d |  |  | 16h | 3,200 | 3,200 |
| 162 | 1.4.3.3.1.1.1 | 服务 1 |  | 1d | 2000-02-09 | 2000-02-09 |  | 2000-02-09 | 2000-02-09 | 1d | 3d | 0d | Development | 8h | 1,600 | 1,600 |
| 163 | 1.4.3.3.1.1.2 | 服务 2 |  | 1d | 2000-02-09 | 2000-02-09 |  | 2000-02-09 | 2000-02-09 | 1d | 0d |  | Development | 8h | 1,600 | 1,600 |
| 164 | 1.4.3.3.1.2 | **组件 2** |  | 2d | 2000-02-10 | 2000-02-11 |  | 2000-02-10 | 2000-02-11 | 2d | 0d |  |  | 24h | 4,800 | 4,800 |
| 165 | 1.4.3.3.1.2.1 | 服务 1 |  | 1d | 2000-02-10 | 2000-02-10 | 163 | 2000-02-10 | 2000-02-10 | 1d | 0d |  | Development | 8h | 1,600 | 1,600 |
| 166 | 1.4.3.3.1.2.2 | 服务 2 |  | 1d | 2000-02-11 | 2000-02-11 | 165 | 2000-02-11 | 2000-02-11 | 1d | 0d |  | Development | 8h | 1,600 | 1,600 |
| 167 | 1.4.3.3.1.2.3 | 服务 3 |  | 1d | 2000-02-10 | 2000-02-10 | 162 | 2000-02-10 | 2000-02-10 | 1d | 3d | 0d | Development | 8h | 1,600 | 1,600 |

| ID | WBS | Task | Duration | Start | Finish | Predecessors | Baseline start | Baseline finish | Baseline duration | Total slack | Free slack | Resources | Work | Cost | Baseline cost |
| --- | --- | --- | --- | --- | --- | --- | --- | --- | --- | --- | --- | --- | --- | --- | --- |
| 168 | 1.4.3.3.1.3 | **组件 3** | 1d | 2000-02-09 | 2000-02-09 |  | 2000-02-09 | 2000-02-09 | 1d | 3d |  |  | 32h | 6,400 | 6,400 |
| 169 | 1.4.3.3.1.3.1 | 服务 1 | 1d | 2000-02-09 | 2000-02-09 |  | 2000-02-09 | 2000-02-09 | 1d | 3d | 0d | Development | 8h | 1,600 | 1,600 |
| 170 | 1.4.3.3.1.3.2 | 服务 2 | 1d | 2000-02-09 | 2000-02-09 |  | 2000-02-09 | 2000-02-09 | 1d | 4d | 0d | Development | 8h | 1,600 | 1,600 |
| 171 | 1.4.3.3.1.3.3 | 服务 3 | 1d | 2000-02-09 | 2000-02-09 |  | 2000-02-09 | 2000-02-09 | 1d | 4d | 0d | Development | 8h | 1,600 | 1,600 |
| 172 | 1.4.3.3.1.3.4 | 服务 4 | 1d | 2000-02-09 | 2000-02-09 |  | 2000-02-09 | 2000-02-09 | 1d | 4d | 0d | Development | 8h | 1,600 | 1,600 |
| 173 | 1.4.3.3.2 | **用户界面开发** | 5d | 2000-02-10 | 2000-02-16 |  | 2000-02-10 | 2000-02-16 | 5d | 0d |  |  | 88h | 17,600 | 17,600 |
| 174 | 1.4.3.3.2.1 | Page 1 / Window 1 | 1d | 2000-02-11 | 2000-02-11 | 167 | 2000-02-11 | 2000-02-11 | 1d | 3d | 0d | Development | 8h | 1,600 | 1,600 |
| 175 | 1.4.3.3.2.2 | Page 2 / Window 2 | 1d | 2000-02-14 | 2000-02-14 | 166 | 2000-02-14 | 2000-02-14 | 1d | 0d |  | Development | 8h | 1,600 | 1,600 |
| 176 | 1.4.3.3.2.3 | Page 3 / Window 3 | 1d | 2000-02-15 | 2000-02-15 | 175 | 2000-02-15 | 2000-02-15 | 1d | 0d |  | Development | 8h | 1,600 | 1,600 |
| 177 | 1.4.3.3.2.4 | Form 1 | 1d | 2000-02-10 | 2000-02-10 | 169 | 2000-02-10 | 2000-02-10 | 1d | 3d | 0d | Development | 8h | 1,600 | 1,600 |
| 178 | 1.4.3.3.2.5 | Form 2 | 1d | 2000-02-10 | 2000-02-10 | 170 | 2000-02-10 | 2000-02-10 | 1d | 4d | 0d | Development | 8h | 1,600 | 1,600 |
| 179 | 1.4.3.3.2.6 | Report 1 | 1d | 2000-02-11 | 2000-02-11 | 177 | 2000-02-11 | 2000-02-11 | 1d | 3d | 0d | Development | 8h | 1,600 | 1,600 |
| 180 | 1.4.3.3.2.7 | Report 2 | 1d | 2000-02-16 | 2000-02-16 | 176 | 2000-02-16 | 2000-02-16 | 1d | 0d |  | Development | 8h | 1,600 | 1,600 |
| 181 | 1.4.3.3.2.8 | Dialog box 1 | 1d | 2000-02-10 | 2000-02-10 | 172, 171 | 2000-02-10 | 2000-02-10 | 1d | 4d | 0d | Development | 8h | 1,600 | 1,600 |
| 182 | 1.4.3.3.2.9 | Dialog box 2 | 1d | 2000-02-10 | 2000-02-10 | 172, 171 | 2000-02-10 | 2000-02-10 | 1d | 4d | 0d | Development | 8h | 1,600 | 1,600 |
| 183 | 1.4.3.3.2.10 | Dialog box 3 | 1d | 2000-02-10 | 2000-02-10 | 172, 171 | 2000-02-10 | 2000-02-10 | 1d | 4d | 0d | Development | 8h | 1,600 | 1,600 |
| 184 | 1.4.3.3.2.11 | Report 3 | 1d | 2000-02-10 | 2000-02-10 | 172, 171 | 2000-02-10 | 2000-02-10 | 1d | 4d | 0d | Development | 8h | 1,600 | 1,600 |
| 185 | 1.4.3.3.3 | 数据库开发 | 1d | 2000-02-09 | 2000-02-09 |  | 2000-02-09 | 2000-02-09 | 1d | 12d | 0d | Development | 8h | 1,600 | 1,600 |
| 186 | 1.4.3.3.4 | **功能集成开发** | 5d | 2000-02-11 | 2000-02-17 |  | 2000-02-11 | 2000-02-17 | 5d | 0d |  |  | 48h | 9,600 | 9,600 |
| 187 | 1.4.3.3.4.1 | 功能 1 | 1d | 2000-02-14 | 2000-02-14 | 174, 194 | 2000-02-14 | 2000-02-14 | 1d | 3d | 0d | Development | 8h | 1,600 | 1,600 |
| 188 | 1.4.3.3.4.2 | 功能 2 | 1d | 2000-02-17 | 2000-02-17 | 180 | 2000-02-17 | 2000-02-17 | 1d | 0d |  | Development | 8h | 1,600 | 1,600 |
| 189 | 1.4.3.3.4.3 | 功能 3 | 1d | 2000-02-14 | 2000-02-14 | 179 | 2000-02-14 | 2000-02-14 | 1d | 3d |  | Development | 8h | 1,600 | 1,600 |
| 190 | 1.4.3.3.4.4 | 功能 4 | 1d | 2000-02-11 | 2000-02-11 | 178 | 2000-02-11 | 2000-02-11 | 1d | 4d |  | Development | 8h | 1,600 | 1,600 |
| 191 | 1.4.3.3.4.5 | 功能 5 | 1d | 2000-02-11 | 2000-02-11 | 184, 181, 182, 183 | 2000-02-11 | 2000-02-11 | 1d | 4d |  | Development | 8h | 1,600 | 1,600 |
| 192 | 1.4.3.3.4.6 | 功能 6 | 1d | 2000-02-11 | 2000-02-11 | 184, 181, 182, 183 | 2000-02-11 | 2000-02-11 | 1d | 4d |  | Development | 8h | 1,600 | 1,600 |

| ID | WBS | Task | Duration | Start | Finish | Predecessors | Baseline start | Baseline finish | Baseline duration | Total slack | Free slack | Resources | Work | Cost | Baseline cost |
| --- | --- | --- | --- | --- | --- | --- | --- | --- | --- | --- | --- | --- | --- | --- | --- |
| 193 | 1.4.3.4 | **用户教育** | 6d | 2000-02-09 | 2000-02-16 |  | 2000-02-09 | 2000-02-16 | 6d | 5d |  |  | 32h | 6,400 | 6,400 |
| 194 | 1.4.3.4.1 | 用户信息 | 1d | 2000-02-09 | 2000-02-09 |  | 2000-02-09 | 2000-02-09 | 1d | 5d | 2d | User Ed | 8h | 1,600 | 1,600 |
| 195 | 1.4.3.4.2 | 开发用户支持系统 | 1d | 2000-02-09 | 2000-02-09 | 94 | 2000-02-09 | 2000-02-09 | 1d | 12d | 4d | User Ed | 8h | 1,600 | 1,600 |
| 196 | 1.4.3.4.3 | 可用性测试 | 1d | 2000-02-15 | 2000-02-15 | 187 | 2000-02-15 | 2000-02-15 | 1d | 8d | 0d | User Ed | 8h | 1,600 | 1,600 |
| 197 | 1.4.3.4.4 | Beta 测试计划 | 1d | 2000-02-16 | 2000-02-16 | 195, 196 | 2000-02-16 | 2000-02-16 | 1d | 8d |  | User Ed | 8h | 1,600 | 1,600 |
| 198 | 1.4.3.5 | **测试** | 10d | 2000-02-09 | 2000-02-22 |  | 2000-02-09 | 2000-02-22 | 10d | 4d |  |  | 248h | 49,600 | 49,600 |
| 199 | 1.4.3.5.1 | 测试规范、测试工具和测试脚本的开发 | 1d | 2000-02-09 | 2000-02-09 |  | 2000-02-09 | 2000-02-09 | 1d | 6d | 0d | Test | 8h | 1,600 | 1,600 |
| 200 | 1.4.3.5.2 | 内部测试 1 | 1d | 2000-02-18 | 2000-02-18 | 147, 199 | 2000-02-18 | 2000-02-18 | 1d | 4d | 0d | Test | 8h | 1,600 | 1,600 |
| 201 | 1.4.3.5.3 | 内部测试 2 | 1d | 2000-02-18 | 2000-02-18 | 148, 199 | 2000-02-18 | 2000-02-18 | 1d | 4d | 0d | Test | 8h | 1,600 | 1,600 |
| 202 | 1.4.3.5.4 | 内部测试 3 | 1d | 2000-02-18 | 2000-02-18 | 149, 199 | 2000-02-18 | 2000-02-18 | 1d | 0d |  | Test | 8h | 1,600 | 1,600 |
| 203 | 1.4.3.5.5 | **组件测试** | 6d | 2000-02-10 | 2000-02-17 | 199 | 2000-02-10 | 2000-02-17 | 6d | 7d |  |  | 168h | 33,600 | 33,600 |
| 204 | 1.4.3.5.5.1 | **组件 1** | 1d | 2000-02-10 | 2000-02-10 |  | 2000-02-10 | 2000-02-10 | 1d | 12d |  |  | 16h | 3,200 | 3,200 |
| 205 | 1.4.3.5.5.1.1 | 服务 1 | 1d | 2000-02-10 | 2000-02-10 | 162 | 2000-02-10 | 2000-02-10 | 1d | 12d |  | Test | 8h | 1,600 | 1,600 |
| 206 | 1.4.3.5.5.1.2 | 服务 2 | 1d | 2000-02-10 | 2000-02-10 | 163 | 2000-02-10 | 2000-02-10 | 1d | 12d |  | Test | 8h | 1,600 | 1,600 |
| 207 | 1.4.3.5.5.2 | **组件 2** | 2d | 2000-02-11 | 2000-02-14 |  | 2000-02-11 | 2000-02-14 | 2d | 10d |  |  | 24h | 4,800 | 4,800 |
| 208 | 1.4.3.5.5.2.1 | 服务 1 | 1d | 2000-02-11 | 2000-02-11 | 165 | 2000-02-11 | 2000-02-11 | 1d | 11d |  | Test | 8h | 1,600 | 1,600 |
| 209 | 1.4.3.5.5.2.2 | 服务 2 | 1d | 2000-02-14 | 2000-02-14 | 166 | 2000-02-14 | 2000-02-14 | 1d | 10d |  | Test | 8h | 1,600 | 1,600 |
| 210 | 1.4.3.5.5.2.3 | 服务 3 | 1d | 2000-02-11 | 2000-02-11 | 167 | 2000-02-11 | 2000-02-11 | 1d | 11d |  | Test | 8h | 1,600 | 1,600 |
| 211 | 1.4.3.5.5.3 | **组件 3** | 1d | 2000-02-10 | 2000-02-10 |  | 2000-02-10 | 2000-02-10 | 1d | 12d |  |  | 32h | 6,400 | 6,400 |
| 212 | 1.4.3.5.5.3.1 | 服务 1 | 1d | 2000-02-10 | 2000-02-10 | 169 | 2000-02-10 | 2000-02-10 | 1d | 12d |  | Test | 8h | 1,600 | 1,600 |
| 213 | 1.4.3.5.5.3.2 | 服务 2 | 1d | 2000-02-10 | 2000-02-10 | 170 | 2000-02-10 | 2000-02-10 | 1d | 12d |  | Test | 8h | 1,600 | 1,600 |
| 214 | 1.4.3.5.5.3.3 | 服务 3 | 1d | 2000-02-10 | 2000-02-10 | 171 | 2000-02-10 | 2000-02-10 | 1d | 12d |  | Test | 8h | 1,600 | 1,600 |
| 215 | 1.4.3.5.5.3.4 | 服务 4 | 1d | 2000-02-10 | 2000-02-10 | 172 | 2000-02-10 | 2000-02-10 | 1d | 12d |  | Test | 8h | 1,600 | 1,600 |
| 216 | 1.4.3.5.5.4 | **用户界面测试** | 5d | 2000-02-11 | 2000-02-17 |  | 2000-02-11 | 2000-02-17 | 5d | 7d |  |  | 88h | 17,600 | 17,600 |
| 217 | 1.4.3.5.5.4.1 | Page 1 / Window 1 | 1d | 2000-02-14 | 2000-02-14 | 174 | 2000-02-14 | 2000-02-14 | 1d | 10d |  | Test | 8h | 1,600 | 1,600 |
| 218 | 1.4.3.5.5.4.2 | Page 2 / Window 2 | 1d | 2000-02-15 | 2000-02-15 | 175 | 2000-02-15 | 2000-02-15 | 1d | 9d |  | Test | 8h | 1,600 | 1,600 |
| 219 | 1.4.3.5.5.4.3 | Page 3 / Window 3 | 1d | 2000-02-16 | 2000-02-16 | 176 | 2000-02-16 | 2000-02-16 | 1d | 8d |  | Test | 8h | 1,600 | 1,600 |
| 220 | 1.4.3.5.5.4.4 | Form 1 | 1d | 2000-02-11 | 2000-02-11 | 177 | 2000-02-11 | 2000-02-11 | 1d | 11d |  | Test | 8h | 1,600 | 1,600 |
| 221 | 1.4.3.5.5.4.5 | Form 2 | 1d | 2000-02-11 | 2000-02-11 | 178 | 2000-02-11 | 2000-02-11 | 1d | 11d |  | Test | 8h | 1,600 | 1,600 |
| 222 | 1.4.3.5.5.4.6 | Report 1 | 1d | 2000-02-14 | 2000-02-14 | 179 | 2000-02-14 | 2000-02-14 | 1d | 10d |  | Test | 8h | 1,600 | 1,600 |
| 223 | 1.4.3.5.5.4.7 | Report 2 | 1d | 2000-02-17 | 2000-02-17 | 180 | 2000-02-17 | 2000-02-17 | 1d | 7d |  | Test | 8h | 1,600 | 1,600 |
| 224 | 1.4.3.5.5.4.8 | Report 3 | 1d | 2000-02-11 | 2000-02-11 | 184 | 2000-02-11 | 2000-02-11 | 1d | 11d |  | Test | 8h | 1,600 | 1,600 |
| 225 | 1.4.3.5.5.4.9 | Dialog box 1 | 1d | 2000-02-11 | 2000-02-11 | 181 | 2000-02-11 | 2000-02-11 | 1d | 11d |  | Test | 8h | 1,600 | 1,600 |
| 226 | 1.4.3.5.5.4.10 | Dialog box 2 | 1d | 2000-02-11 | 2000-02-11 | 182 | 2000-02-11 | 2000-02-11 | 1d | 11d |  | Test | 8h | 1,600 | 1,600 |
| 227 | 1.4.3.5.5.4.11 | Dialog box 3 | 1d | 2000-02-11 | 2000-02-11 | 183 | 2000-02-11 | 2000-02-11 | 1d | 11d |  | Test | 8h | 1,600 | 1,600 |
| 228 | 1.4.3.5.5.5 | 数据库测试 | 1d | 2000-02-10 | 2000-02-10 | 185 | 2000-02-10 | 2000-02-10 | 1d | 12d |  | Test | 8h | 1,600 | 1,600 |

| ID | WBS | Task | Type | Duration | Start | Finish | Predecessors | Baseline start | Baseline finish | Baseline duration | Total slack | Free slack | Resources | Work | Cost | Baseline cost |
| --- | --- | --- | --- | --- | --- | --- | --- | --- | --- | --- | --- | --- | --- | --- | --- | --- |
| 229 | 1.4.3.5.6 | **集成测试** |  | 1d | 2000-02-21 | 2000-02-21 |  | 2000-02-21 | 2000-02-21 | 1d | 0d |  |  | 24h | 4,800 | 4,800 |
| 230 | 1.4.3.5.6.1 | Internal release 1 |  | 1d | 2000-02-21 | 2000-02-21 | 200 | 2000-02-21 | 2000-02-21 | 1d | 4d | 0d | Test | 8h | 1,600 | 1,600 |
| 231 | 1.4.3.5.6.2 | Internal release 2 |  | 1d | 2000-02-21 | 2000-02-21 | 201 | 2000-02-21 | 2000-02-21 | 1d | 4d | 0d | Test | 8h | 1,600 | 1,600 |
| 232 | 1.4.3.5.6.3 | Internal release 3 |  | 1d | 2000-02-21 | 2000-02-21 | 202 | 2000-02-21 | 2000-02-21 | 1d | 0d |  | Test | 8h | 1,600 | 1,600 |
| 233 | 1.4.3.5.7 | **测试状态报告** |  | 1d | 2000-02-22 | 2000-02-22 |  | 2000-02-22 | 2000-02-22 | 1d | 0d |  |  | 24h | 4,800 | 4,800 |
| 234 | 1.4.3.5.7.1 | Internal release 1 |  | 1d | 2000-02-22 | 2000-02-22 | 230 | 2000-02-22 | 2000-02-22 | 1d | 4d |  | Test | 8h | 1,600 | 1,600 |
| 235 | 1.4.3.5.7.2 | Internal release 2 |  | 1d | 2000-02-22 | 2000-02-22 | 231 | 2000-02-22 | 2000-02-22 | 1d | 4d |  | Test | 8h | 1,600 | 1,600 |
| 236 | 1.4.3.5.7.3 | Internal release 3 |  | 1d | 2000-02-22 | 2000-02-22 | 232 | 2000-02-22 | 2000-02-22 | 1d | 0d |  | Test | 8h | 1,600 | 1,600 |
| 237 | 1.4.3.6 | **实施管理** |  | 4d | 2000-02-09 | 2000-02-14 |  | 2000-02-09 | 2000-02-14 | 4d | 10d |  |  | 32h | 6,400 | 6,400 |
| 238 | 1.4.3.6.1 | 实施用户支持系统 |  | 1d | 2000-02-09 | 2000-02-09 |  | 2000-02-09 | 2000-02-09 | 1d | 10d | 0d | Logistics | 8h | 1,600 | 1,600 |
| 239 | 1.4.3.6.2 | 系统运行支持手册 |  | 1d | 2000-02-10 | 2000-02-10 | 238 | 2000-02-10 | 2000-02-10 | 1d | 10d | 0d | Logistics | 8h | 1,600 | 1,600 |
| 240 | 1.4.3.6.3 | Beta 测试计划 |  | 1d | 2000-02-11 | 2000-02-11 | 239 | 2000-02-11 | 2000-02-11 | 1d | 10d | 0d | Logistics | 8h | 1,600 | 1,600 |
| 241 | 1.4.3.6.4 | 内部项目组支持 |  | 1d | 2000-02-14 | 2000-02-14 | 240 | 2000-02-14 | 2000-02-14 | 1d | 10d |  | Logistics | 8h | 1,600 | 1,600 |
| 242 | 1.4.3.7 | 风险评估 |  | 1d | 2000-02-23 | 2000-02-23 | 236 | 2000-02-23 | 2000-02-23 | 1d | 0d |  | Program Management; Product Management; Development; Test; Logistics; User Ed | 48h | 9,600 | 9,600 |
| 243 | 1.4.3.8 | 开发成果审核 |  | 1d | 2000-02-24 | 2000-02-24 | 242 | 2000-02-24 | 2000-02-24 | 1d | 0d |  | Program Management; Product Management; Development; Test; Logistics; User Ed | 48h | 9,600 | 9,600 |
| 244 | 1.4.3.9 | 开发成果更新 |  | 1d | 2000-02-25 | 2000-02-25 | 144 | 2000-02-25 | 2000-02-25 | 1d | 0d |  | Program Management; Product Management; Development; Test; Logistics; User Ed | 48h | 9,600 | 9,600 |
| 245 | 1.4.4 | 可宽限时间 |  | 1d | 2000-02-28 | 2000-02-28 | 244 | 2000-02-28 | 2000-02-28 | 1d | 0d |  |  |  |  |  |
| 246 | 1.5 | **发布** |  | 30d | 2000-02-29 | 2000-04-10 | 142 | 2000-02-29 | 2000-04-10 | 30d | 0d |  |  | 472h | 91,200 | 91,200 |
| 247 | 1.5.1 | **对外进度** |  | 2d | 2000-04-06 | 2000-04-10 |  | 2000-04-06 | 2000-04-10 | 2d | 0d |  |  |  |  |  |
| 248 | 1.5.1.1 | 产品发布内容审核 | milestone | 0d | 2000-04-06 | 2000-04-06 | 302 | 2000-04-06 | 2000-04-06 | 0d | 0d |  | Program Management; Product Management; Development; Test; Logistics; User Ed; Support; Customer |  |  |  |
| 249 | 1.5.1.2 | 发布 | milestone | 0d | 2000-04-10 | 2000-04-10 | 310 | 2000-04-10 | 2000-04-10 | 0d | 0d |  | Program Management; Product Management; Development; Test; Logistics; User Ed; Support; Customer |  |  |  |
| 250 | 1.5.2 | **内部进度** |  | 20d | 2000-03-01 | 2000-03-29 |  | 2000-03-01 | 2000-03-29 | 20d | 0d |  |  |  |  |  |
| 251 | 1.5.2.1 | Beta 1 | milestone | 0d | 2000-03-01 | 2000-03-01 | 267, 274, 278 | 2000-03-01 | 2000-03-01 | 0d | 0d |  | Program Management; Product Management; Development; Test; Logistics; User Ed |  |  |  |
| 252 | 1.5.2.2 | Beta 2 | milestone | 0d | 2000-03-07 | 2000-03-07 | 268 | 2000-03-07 | 2000-03-07 | 0d | 0d |  | Program Management; Product Management; Development; Test; Logistics; User Ed |  |  |  |
| 253 | 1.5.2.3 | Release candidate 1 | milestone | 0d | 2000-03-13 | 2000-03-13 | 269 | 2000-03-13 | 2000-03-13 | 0d | 0d |  | Program Management; Product Management; Development; Test; Logistics; User Ed |  |  |  |
| 254 | 1.5.2.4 | Release candidate 2 | milestone | 0d | 2000-03-17 | 2000-03-17 | 270 | 2000-03-17 | 2000-03-17 | 0d | 0d |  | Program Management; Product Management; Development; Test; Logistics; User Ed |  |  |  |
| 255 | 1.5.2.5 | Release candidate 3 | milestone | 0d | 2000-03-23 | 2000-03-23 | 271 | 2000-03-23 | 2000-03-23 | 0d | 0d |  | Program Management; Product Management; Development; Test; Logistics; User Ed |  |  |  |
| 256 | 1.5.2.6 | Golden release | milestone | 0d | 2000-03-29 | 2000-03-29 | 272 | 2000-03-29 | 2000-03-29 | 0d | 0d |  | Program Management; Product Management; Development; Test; Logistics; User Ed; Support; Customer |  |  |  |

| ID | WBS | Task | Duration | Start | Finish | Predecessors | Baseline start | Baseline finish | Baseline duration | Total slack | Free slack | Resources | Work | Cost | Baseline cost |
| --- | --- | --- | --- | --- | --- | --- | --- | --- | --- | --- | --- | --- | --- | --- | --- |
| 257 | 1.5.3 | **工作** | 29d | 2000-02-29 | 2000-04-07 |  | 2000-02-29 | 2000-04-07 | 29d | 0d |  |  | 472h | 91,200 | 91,200 |
| 258 | 1.5.3.1 | **产品管理** | 3d | 2000-02-29 | 2000-03-02 |  | 2000-02-29 | 2000-03-02 | 3d | 27d |  |  | 24h | 4,800 | 4,800 |
| 259 | 1.5.3.1.1 | 测试版本的协调 | 1d | 2000-03-02 | 2000-03-02 | 251 | 2000-03-02 | 2000-03-02 | 1d | 27d |  | Product Management | 8h | 1,600 | 1,600 |
| 260 | 1.5.3.1.2 | 执行交流计划 | 1d | 2000-02-29 | 2000-02-29 |  | 2000-02-29 | 2000-02-29 | 1d | 29d |  | Product Management | 8h | 1,600 | 1,600 |
| 261 | 1.5.3.1.3 | 发布计划 | 1d | 2000-02-29 | 2000-02-29 |  | 2000-02-29 | 2000-02-29 | 1d | 29d |  | Product Management | 8h | 1,600 | 1,600 |
| 262 | 1.5.3.2 | **项目管理** | 3d | 2000-02-29 | 2000-03-02 |  | 2000-02-29 | 2000-03-02 | 3d | 27d |  |  | 24h | 4,800 | 4,800 |
| 263 | 1.5.3.2.1 | Beta 测试过程管理 | 1d | 2000-03-02 | 2000-03-02 | 251 | 2000-03-02 | 2000-03-02 | 1d | 27d |  | Program Management | 8h | 1,600 | 1,600 |
| 264 | 1.5.3.2.2 | 项目进度跟踪 | 1d | 2000-02-29 | 2000-02-29 |  | 2000-02-29 | 2000-02-29 | 1d | 29d |  | Program Management | 8h | 1,600 | 1,600 |
| 265 | 1.5.3.2.3 | Bug 跟踪 | 1d | 2000-02-29 | 2000-02-29 |  | 2000-02-29 | 2000-02-29 | 1d | 29d |  | Program Management | 8h | 1,600 | 1,600 |
| 266 | 1.5.3.3 | **开发** | 22d | 2000-02-29 | 2000-03-29 |  | 2000-02-29 | 2000-03-29 | 22d | 0d |  |  | 48h | 9,600 | 9,600 |
| 267 | 1.5.3.3.1 | Bug resolution internal releases | 1d | 2000-02-29 | 2000-02-29 |  | 2000-02-29 | 2000-02-29 | 1d | 1d |  | Development | 8h | 1,600 | 1,600 |
| 268 | 1.5.3.3.2 | Bug resolution beta 1 | 1d | 2000-03-07 | 2000-03-07 | 296 | 2000-03-07 | 2000-03-07 | 1d | 0d |  | Development | 8h | 1,600 | 1,600 |
| 269 | 1.5.3.3.3 | Bug resolution beta 2 | 1d | 2000-03-13 | 2000-03-13 | 297 | 2000-03-13 | 2000-03-13 | 1d | 0d |  | Development | 8h | 1,600 | 1,600 |
| 270 | 1.5.3.3.4 | Bug resolution and code optimization release candidate 1 | 1d | 2000-03-17 | 2000-03-17 | 298 | 2000-03-17 | 2000-03-17 | 1d | 0d |  | Development | 8h | 1,600 | 1,600 |
| 271 | 1.5.3.3.5 | Bug resolution and code optimization release candidate 2 | 1d | 2000-03-23 | 2000-03-23 | 299 | 2000-03-23 | 2000-03-23 | 1d | 0d |  | Development | 8h | 1,600 | 1,600 |
| 272 | 1.5.3.3.6 | Bug resolution and code optimization release candidate 3 | 1d | 2000-03-29 | 2000-03-29 | 300 | 2000-03-29 | 2000-03-29 | 1d | 0d |  | Development | 8h | 1,600 | 1,600 |
| 273 | 1.5.3.4 | **用户教育** | 11d | 2000-02-29 | 2000-03-14 |  | 2000-02-29 | 2000-03-14 | 11d | 1d |  |  | 24h | 4,800 | 4,800 |
| 274 | 1.5.3.4.1 | 稳定用户支持系统 | 1d | 2000-02-29 | 2000-02-29 |  | 2000-02-29 | 2000-02-29 | 1d | 1d |  | User Ed | 8h | 1,600 | 1,600 |
| 275 | 1.5.3.4.2 | Beta 培训课程 | 1d | 2000-03-02 | 2000-03-02 | 274, 251 | 2000-03-02 | 2000-03-02 | 1d | 26d | 7d | User Ed | 8h | 1,600 | 1,600 |
| 276 | 1.5.3.4.3 | 发布培训课程 | 1d | 2000-03-14 | 2000-03-14 | 275, 253 | 2000-03-14 | 2000-03-14 | 1d | 19d |  | User Ed | 8h | 1,600 | 1,600 |
| 277 | 1.5.3.5 | **测试** | 28d | 2000-02-29 | 2000-04-06 |  | 2000-02-29 | 2000-04-06 | 28d | 0d |  |  | 176h | 33,600 | 33,600 |
| 278 | 1.5.3.5.1 | **模拟生产环境** | 2d | 2000-02-29 | 2000-03-01 |  | 2000-02-29 | 2000-03-01 | 2d | 0d |  |  | 16h | 3,200 | 3,200 |
| 279 | 1.5.3.5.1.1 | 功能测试 | 1d | 2000-02-29 | 2000-02-29 |  | 2000-02-29 | 2000-02-29 | 1d | 0d |  | Test | 8h | 1,600 | 1,600 |
| 280 | 1.5.3.5.1.2 | 压力测试 | 1d | 2000-03-01 | 2000-03-01 | 279 | 2000-03-01 | 2000-03-01 | 1d | 0d |  | Test | 8h | 1,600 | 1,600 |

| ID | WBS | Task | Duration | Start | Finish | Predecessors | Baseline start | Baseline finish | Baseline duration | Total slack | Free slack | Resources | Work | Cost | Baseline cost |
| --- | --- | --- | --- | --- | --- | --- | --- | --- | --- | --- | --- | --- | --- | --- | --- |
| 281 | 1.5.3.5.2 | **构建测试版本** | 21d | 2000-03-02 | 2000-03-30 |  | 2000-03-02 | 2000-03-30 | 21d | 0d |  |  | 48h | 9,600 | 9,600 |
| 282 | 1.5.3.5.2.1 | Beta 1 | 1d | 2000-03-02 | 2000-03-02 | 251 | 2000-03-02 | 2000-03-02 | 1d | 0d |  | Test | 8h | 1,600 | 1,600 |
| 283 | 1.5.3.5.2.2 | Beta 2 | 1d | 2000-03-08 | 2000-03-08 | 252 | 2000-03-08 | 2000-03-08 | 1d | 0d |  | Test | 8h | 1,600 | 1,600 |
| 284 | 1.5.3.5.2.3 | Release candidate 1 | 1d | 2000-03-14 | 2000-03-14 | 253 | 2000-03-14 | 2000-03-14 | 1d | 0d |  | Test | 8h | 1,600 | 1,600 |
| 285 | 1.5.3.5.2.4 | Release candidate 2 | 1d | 2000-03-20 | 2000-03-20 | 254 | 2000-03-20 | 2000-03-20 | 1d | 0d |  | Test | 8h | 1,600 | 1,600 |
| 286 | 1.5.3.5.2.5 | Release candidate 3 | 1d | 2000-03-24 | 2000-03-24 | 255 | 2000-03-24 | 2000-03-24 | 1d | 0d |  | Test | 8h | 1,600 | 1,600 |
| 287 | 1.5.3.5.2.6 | Golden release | 1d | 2000-03-30 | 2000-03-30 | 256 | 2000-03-30 | 2000-03-30 | 1d | 0d |  | Test | 8h | 1,600 | 1,600 |
| 288 | 1.5.3.5.3 | **生产环境测试** | 21d | 2000-03-03 | 2000-03-31 |  | 2000-03-03 | 2000-03-31 | 21d | 0d |  |  | 48h | 9,600 | 9,600 |
| 289 | 1.5.3.5.3.1 | Beta 1 | 1d | 2000-03-03 | 2000-03-03 | 282 | 2000-03-03 | 2000-03-03 | 1d | 0d |  | Test | 8h | 1,600 | 1,600 |
| 290 | 1.5.3.5.3.2 | Beta 2 | 1d | 2000-03-09 | 2000-03-09 | 283 | 2000-03-09 | 2000-03-09 | 1d | 0d |  | Test | 8h | 1,600 | 1,600 |
| 291 | 1.5.3.5.3.3 | Release candidate 1 | 1d | 2000-03-15 | 2000-03-15 | 284 | 2000-03-15 | 2000-03-15 | 1d | 0d |  | Test | 8h | 1,600 | 1,600 |
| 292 | 1.5.3.5.3.4 | Release candidate 2 | 1d | 2000-03-21 | 2000-03-21 | 285 | 2000-03-21 | 2000-03-21 | 1d | 0d |  | Test | 8h | 1,600 | 1,600 |
| 293 | 1.5.3.5.3.5 | Release candidate 3 | 1d | 2000-03-27 | 2000-03-27 | 286 | 2000-03-27 | 2000-03-27 | 1d | 0d |  | Test | 8h | 1,600 | 1,600 |
| 294 | 1.5.3.5.3.6 | Golden release | 1d | 2000-03-31 | 2000-03-31 | 287 | 2000-03-31 | 2000-03-31 | 1d | 0d |  | Test | 8h | 1,600 | 1,600 |
| 295 | 1.5.3.5.4 | **测试报告** | 21d | 2000-03-06 | 2000-04-03 |  | 2000-03-06 | 2000-04-03 | 21d | 0d |  |  | 48h | 9,600 | 9,600 |
| 296 | 1.5.3.5.4.1 | Beta 1 | 1d | 2000-03-06 | 2000-03-06 | 289 | 2000-03-06 | 2000-03-06 | 1d | 0d |  | Test | 8h | 1,600 | 1,600 |
| 297 | 1.5.3.5.4.2 | Beta 2 | 1d | 2000-03-10 | 2000-03-10 | 290 | 2000-03-10 | 2000-03-10 | 1d | 0d |  | Test | 8h | 1,600 | 1,600 |
| 298 | 1.5.3.5.4.3 | Release candidate 1 | 1d | 2000-03-16 | 2000-03-16 | 291 | 2000-03-16 | 2000-03-16 | 1d | 0d |  | Test | 8h | 1,600 | 1,600 |
| 299 | 1.5.3.5.4.4 | Release candidate 2 | 1d | 2000-03-22 | 2000-03-22 | 292 | 2000-03-22 | 2000-03-22 | 1d | 0d |  | Test | 8h | 1,600 | 1,600 |
| 300 | 1.5.3.5.4.5 | Release candidate 3 | 1d | 2000-03-28 | 2000-03-28 | 293 | 2000-03-28 | 2000-03-28 | 1d | 0d |  | Test | 8h | 1,600 | 1,600 |
| 301 | 1.5.3.5.4.6 | Golden release | 1d | 2000-04-03 | 2000-04-03 | 294 | 2000-04-03 | 2000-04-03 | 1d | 0d |  | Test | 8h | 1,600 | 1,600 |
| 302 | 1.5.3.5.5 | 可发布性测试 | 1d | 2000-04-06 | 2000-04-06 | 308 | 2000-04-06 | 2000-04-06 | 1d | 0d |  | Test; Customer | 16h | 1,600 | 1,600 |
| 303 | 1.5.3.6 | **实施管理** | 11d | 2000-02-29 | 2000-03-14 |  | 2000-02-29 | 2000-03-14 | 11d | 19d |  |  | 24h | 4,800 | 4,800 |
| 304 | 1.5.3.6.1 | 产品实施计划 | 1d | 2000-02-29 | 2000-02-29 |  | 2000-02-29 | 2000-02-29 | 1d | 28d | 1d | Logistics | 8h | 1,600 | 1,600 |
| 305 | 1.5.3.6.2 | Beta 测试环境的建立、实施和支持 | 1d | 2000-03-02 | 2000-03-02 | 304, 251 | 2000-03-02 | 2000-03-02 | 1d | 27d |  | Logistics | 8h | 1,600 | 1,600 |
| 306 | 1.5.3.6.3 | 运行和支持人员的培训 | 1d | 2000-03-14 | 2000-03-14 | 304, 253 | 2000-03-14 | 2000-03-14 | 1d | 19d |  | Logistics | 8h | 1,600 | 1,600 |
| 307 | 1.5.3.7 | 风险评估 | 1d | 2000-04-04 | 2000-04-04 | 301 | 2000-04-04 | 2000-04-04 | 1d | 0d |  | Program Management; Product Management; Development; Test; Logistics; User Ed | 48h | 9,600 | 9,600 |
| 308 | 1.5.3.8 | 产品稳定性审核 | 1d | 2000-04-05 | 2000-04-05 | 307 | 2000-04-05 | 2000-04-05 | 1d | 0d |  | Program Management; Product Management; Development; Test; Logistics; User Ed; Support | 56h | 9,600 | 9,600 |
| 309 | 1.5.3.9 | 产品稳定性改进 | 1d | 2000-04-07 | 2000-04-07 | 248 | 2000-04-07 | 2000-04-07 | 1d | 0d |  | Program Management; Product Management; Development; Test; Logistics; User Ed | 48h | 9,600 | 9,600 |
| 310 | 1.5.4 | 可宽限时间 | 1d | 2000-04-10 | 2000-04-10 | 309 | 2000-04-10 | 2000-04-10 | 1d | 0d |  |  |  |  |  |
